# Plan General - Sin hito 0

Schedule from MS Project, 2016-10-20 to 2016-12-28, costs in €, A marks actual dates.
Hewlett-Packard

## Calendars

- Estándar: Mon-Fri 09:00-13:00, 15:00-19:00; Sat-Sun off. Exceptions (off unless hours are given): 2016-10-31 to 2016-11-01 (Puente de "Todos los santos").

## Resources

| Resource | Rate |
| --- | --- |
| Raquel | 10 |
| Alex | 10 |
| Juanfran | 10 |
| Pablo | 10 |
| Yolanda | 10 |

## Schedule

| ID | WBS | Task | Duration | Start | Finish | Predecessors | Complete | Remaining | Baseline start | Baseline finish | Baseline duration | Baseline 1 start | Baseline 1 finish | Total slack | Free slack | Constraint | Resources | Work | Actual work | Cost | Actual cost |
| --- | --- | --- | --- | --- | --- | --- | --- | --- | --- | --- | --- | --- | --- | --- | --- | --- | --- | --- | --- | --- | --- |
| 1 | 1 | **HITO 1** | 45d | 2016-10-20 A | 2016-12-23 |  | 85% | 6.78d | 2016-09-29 | 2016-12-02 | 45d | 2016-10-20 | 2016-12-23 | 0d |  |  |  | 1316h | 1112h | 13,160 | 11,120 |
| 2 | 1.1 | **Iteración 1** | 8d | 2016-10-20 A | 2016-11-02 |  | 95% | 0.43d | 2016-09-29 | 2016-10-10 | 8d | 2016-10-20 | 2016-11-02 | 0d |  |  |  | 264h | 252h | 2,640 | 2,520 |
| 3 | 1.1.1 | Revisar diseño de interfaces (mockups) | 3d | 2016-10-20 A | 2016-10-24 A |  | 100% |  | 2016-09-29 | 2016-10-03 | 3d | 2016-10-20 | 2016-10-24 |  |  |  | Raquel; Yolanda | 48h | 48h | 480 | 480 |
| 4 | 1.1.2 | Revisar documento de especificación | 3d | 2016-10-20 A | 2016-10-24 A |  | 100% |  | 2016-09-29 | 2016-10-03 | 3d | 2016-10-20 | 2016-10-24 |  |  |  | Juanfran; Pablo; Alex | 72h | 72h | 720 | 720 |
| 5 | 1.1.3 | Realizar plan iteración 1-2 | 1d | 2016-10-25 A | 2016-10-25 A | 4, 3 | 100% |  | 2016-10-04 | 2016-10-04 | 1d | 2016-10-25 | 2016-10-25 |  |  | start no earlier than 2016-10-24 | Raquel; Yolanda | 16h | 16h | 160 | 160 |
| 6 | 1.1.4 | Terminar el canvas para MOOCS | 2d | 2016-10-26 A | 2016-10-27 A | 4, 3 | 100% |  | 2016-10-05 | 2016-10-06 | 2d | 2016-10-26 | 2016-10-27 |  |  | start no earlier than 2016-10-26 | Raquel; Yolanda | 32h | 32h | 320 | 320 |
| 7 | 1.1.5 | Configurar e instalar los elementos de backend | 3d | 2016-10-26 A | 2016-10-28 A | 5 | 100% |  | 2016-10-05 | 2016-10-07 | 3d | 2016-10-26 | 2016-10-28 |  |  |  | Alex; Juanfran; Pablo | 72h | 72h | 720 | 720 |
| 8 | 1.1.6 | Configurar certificado SSL | 1d | 2016-11-02 A | 2016-11-02 A | 7 | 100% |  | 2016-10-10 | 2016-10-10 | 1d | 2016-11-02 | 2016-11-02 |  |  |  | Alex | 8h | 8h | 80 | 80 |
| 9 | 1.1.7 | Registrar tiempos y % de realización de tareas | 0.25d | 2016-11-02 | 2016-11-02 |  |  |  | 2016-10-12 | 2016-10-12 | 0.25d | 2016-11-02 | 2016-11-02 | 0.75d |  | start no earlier than 2016-11-02 | Juanfran; Pablo | 4h |  | 40 |  |
| 10 | 1.1.8 | Comparar planificación prevista y real | 0.25d | 2016-11-02 A | 2016-11-02 A |  | 100% |  | 2016-10-12 | 2016-10-12 | 0.25d | 2016-11-02 | 2016-11-02 |  |  | start no earlier than 2016-11-02 | Juanfran; Pablo | 4h | 4h | 40 | 40 |
| 11 | 1.1.9 | Aplicar modelo EVA | 0.25d | 2016-11-02 | 2016-11-02 |  |  |  | 2016-10-12 | 2016-10-12 | 0.25d | 2016-11-02 | 2016-11-02 | 0.75d |  | start no earlier than 2016-11-02 | Juanfran; Pablo | 4h |  | 40 |  |
| 12 | 1.1.10 | Confeccionar informes de iteración e informe resumen | 0.25d | 2016-11-02 | 2016-11-02 |  |  |  | 2016-10-12 | 2016-10-12 | 0.25d | 2016-11-02 | 2016-11-02 | 0.75d |  | start no earlier than 2016-11-02 | Juanfran; Pablo | 4h |  | 40 |  |
| 13 | 1.2 | **Iteración 2** | 10d | 2016-11-03 A | 2016-11-16 | 2 | 66% | 3.4d | 2016-10-13 | 2016-10-26 | 10d | 2016-11-03 | 2016-11-16 | 0d |  |  |  | 384h | 252h | 3,840 | 2,520 |
| 14 | 1.2.1 | Añadir CI al proceso de desarrollo | 0.5d | 2016-11-03 A | 2016-11-03 A |  | 100% |  | 2016-10-13 | 2016-10-13 | 0.5d | 2016-11-03 | 2016-11-03 |  |  | start no earlier than 2016-10-24 | Alex | 4h | 4h | 40 | 40 |
| 15 | 1.2.2 | Revisar esquema de base de datos | 1d | 2016-11-03 A | 2016-11-03 A |  | 100% |  | 2016-10-13 | 2016-10-13 | 1d | 2016-11-03 | 2016-11-03 |  |  | finish no earlier than 2016-10-24 | Juanfran | 8h | 8h | 80 | 80 |
| 16 | 1.2.3 | Pruebas con API de Facebook | 0.5d | 2016-11-03 | 2016-11-03 |  |  |  | 2016-10-13 | 2016-10-13 | 0.5d | 2016-11-03 | 2016-11-03 | 9.5d |  | finish no earlier than 2016-10-24 | Raquel | 4h |  | 40 |  |
| 17 | 1.2.4 | Pruebas con API de Twitter | 0.5d | 2016-11-03 | 2016-11-03 |  |  |  | 2016-10-13 | 2016-10-13 | 0.5d | 2016-11-03 | 2016-11-03 | 9.5d |  | finish no earlier than 2016-10-24 | Yolanda | 4h |  | 40 |  |
| 18 | 1.2.5 | Pruebas con API de Google+ | 0.5d | 2016-11-03 | 2016-11-03 |  |  |  | 2016-10-13 | 2016-10-13 | 0.5d | 2016-11-03 | 2016-11-03 | 9.5d |  | finish no earlier than 2016-10-24 | Pablo | 4h |  | 40 |  |
| 19 | 1.2.6 | Configurar servidor para trabajar en distintos SO | 0.5d | 2016-11-03 A | 2016-11-03 A |  | 100% |  | 2016-10-13 | 2016-10-13 | 0.5d | 2016-11-03 | 2016-11-03 |  |  | finish no earlier than 2016-10-24 | Alex | 4h | 4h | 40 | 40 |
| 20 | 1.2.7 | Redactar informe de TAG | 0.5d | 2016-11-03 A | 2016-11-03 A |  | 100% |  | 2016-10-13 | 2016-10-13 | 0.5d | 2016-11-03 | 2016-11-03 |  |  | finish no earlier than 2016-10-24 | Raquel; Yolanda | 8h | 8h | 80 | 80 |
| 21 | 1.2.8 | Terminar plan general | 0.5d | 2016-11-03 A | 2016-11-03 |  | 50% | 0.25d | 2016-10-13 | 2016-10-13 | 0.5d | 2016-11-03 | 2016-11-03 | 9.5d |  | finish no earlier than 2016-10-24 | Pablo | 4h | 2h | 40 | 20 |
| 22 | 1.2.9 | Definir guía de estilo | 3d | 2016-11-04 A | 2016-11-08 |  | 50% | 1.5d | 2016-10-14 | 2016-10-18 | 3d | 2016-11-04 | 2016-11-08 | 6d |  | start no earlier than 2016-11-04 | Raquel; Yolanda | 48h | 24h | 480 | 240 |
| 23 | 1.2.10 | Crear modelos en la API | 4d | 2016-11-04 A | 2016-11-09 | 15 | 75% | 1d | 2016-10-14 | 2016-10-19 | 4d | 2016-11-04 | 2016-11-09 | 2d | 0d | finish no earlier than 2016-10-23 | Alex; Juanfran; Pablo | 96h | 72h | 960 | 720 |
| 24 | 1.2.11 | Definir contenido del MOOC | 1d | 2016-11-09 A | 2016-11-09 A |  | 100% |  | 2016-10-19 | 2016-10-19 | 1d | 2016-11-09 | 2016-11-09 |  |  | start no earlier than 2016-11-09 | Yolanda | 8h | 8h | 80 | 80 |
| 25 | 1.2.12 | Crear logo de la plataforma | 4d | 2016-11-09 A | 2016-11-14 A | 22 | 100% |  | 2016-10-19 | 2016-10-24 | 4d | 2016-11-09 | 2016-11-14 |  |  | finish no earlier than 2016-10-27 | Raquel | 32h | 32h | 320 | 320 |
| 26 | 1.2.13 | Desarrollar primera versión del MOOC | 3d | 2016-11-10 A | 2016-11-14 | 24 | 50% | 1.5d | 2016-10-20 | 2016-10-24 | 3d | 2016-11-10 | 2016-11-14 | 2d |  | start no earlier than 2016-11-02 | Yolanda | 24h | 12h | 240 | 120 |
| 27 | 1.2.14 | Implementar rutas de la API | 4d | 2016-11-10 A | 2016-11-15 | 15, 23, 14, 19 | 50% | 2d | 2016-10-20 | 2016-10-25 | 4d | 2016-11-10 | 2016-11-15 | 1d |  | finish no earlier than 2016-10-26 | Alex; Juanfran; Pablo | 96h | 48h | 960 | 480 |
| 28 | 1.2.15 | Rellenar documento de gestión de riesgos | 1d | 2016-11-16 | 2016-11-16 |  |  |  | 2016-10-26 | 2016-10-26 | 1d | 2016-11-16 | 2016-11-16 | 0d |  | start no earlier than 2016-11-16 | Juanfran | 8h |  | 80 |  |
| 29 | 1.2.16 | Revisar iteración 1-2 | 0.5d | 2016-11-16 A | 2016-11-16 A | 21 | 100% |  | 2016-10-26 | 2016-10-26 | 0.5d | 2016-11-16 | 2016-11-16 |  |  | start no earlier than 2016-11-16 | Alex; Raquel; Yolanda | 12h | 12h | 120 | 120 |
| 30 | 1.2.17 | Realizar plan iteración 3-4-5 | 0.5d | 2016-11-16 A | 2016-11-16 A | 21, 29 | 100% |  | 2016-10-26 | 2016-10-26 | 0.5d | 2016-11-16 | 2016-11-16 |  |  | finish no earlier than 2016-10-25 | Alex; Raquel; Yolanda | 12h | 12h | 120 | 120 |
| 31 | 1.2.18 | Registrar tiempos y % de realización de tareas | 0.25d | 2016-11-16 A | 2016-11-16 A | 29 | 100% |  | 2016-10-26 | 2016-10-26 | 0.25d | 2016-11-16 | 2016-11-16 |  |  | start no earlier than 2016-11-07 | Pablo | 2h | 2h | 20 | 20 |
| 32 | 1.2.19 | Comparar planificación prevista y real | 0.25d | 2016-11-16 A | 2016-11-16 A | 29 | 100% |  | 2016-10-26 | 2016-10-26 | 0.25d | 2016-11-16 | 2016-11-16 |  |  | start no earlier than 2016-11-07 | Pablo | 2h | 2h | 20 | 20 |
| 33 | 1.2.20 | Aplicar modelo EVA | 0.25d | 2016-11-16 | 2016-11-16 | 29 |  |  | 2016-10-26 | 2016-10-26 | 0.25d | 2016-11-16 | 2016-11-16 | 0.25d |  | start no earlier than 2016-11-07 | Pablo | 2h |  | 20 |  |
| 34 | 1.2.21 | Confeccionar informes de iteración e informe resumen | 0.25d | 2016-11-16 A | 2016-11-16 A | 29 | 100% |  | 2016-10-26 | 2016-10-26 | 0.25d | 2016-11-16 | 2016-11-16 |  |  | start no earlier than 2016-11-07 | Pablo | 2h | 2h | 20 | 20 |

Notes:
- 1: COLORES: / - Amarillo: eL / - Naranja: SMA / - Verde: PM / - Azul: SDM / - Violeta: TAG / - Rojo: SMBI
- 2: Primeras configuraciones del servidor
- 13: Implementar base de datos y primeros pasos con tecnologías de backend

| ID | WBS | Task | Duration | Start | Finish | Predecessors | Complete | Remaining | Baseline start | Baseline finish | Baseline duration | Baseline 1 start | Baseline 1 finish | Total slack | Constraint | Resources | Work | Actual work | Cost | Actual cost |
| --- | --- | --- | --- | --- | --- | --- | --- | --- | --- | --- | --- | --- | --- | --- | --- | --- | --- | --- | --- | --- |
| 35 | 1.3 | **Iteración 3** | 10d | 2016-11-17 A | 2016-11-30 | 13 | 98% | 0.25d | 2016-10-27 | 2016-11-11 | 10d | 2016-11-17 | 2016-11-30 | 0d |  |  | 240h | 234h | 2,400 | 2,340 |
| 36 | 1.3.1 | Realizar autentificación local del usuario | 2d | 2016-11-17 A | 2016-11-18 A |  | 100% |  | 2016-10-27 | 2016-10-28 | 2d | 2016-11-17 | 2016-11-18 |  |  | Alex | 16h | 16h | 160 | 160 |
| 37 | 1.3.2 | Realizar cursos y tutoriales de Angular 2 y NodeJS | 2d | 2016-11-17 A | 2016-11-18 A |  | 100% |  | 2016-10-27 | 2016-10-31 | 2d | 2016-11-17 | 2016-11-18 |  | finish no earlier than 2016-11-11 | Pablo; Juanfran; Raquel; Yolanda | 64h | 64h | 640 | 640 |
| 38 | 1.3.3 | Implementar búsqueda básica de anuncios | 1d | 2016-11-21 A | 2016-11-21 A |  | 100% |  | 2016-11-02 | 2016-11-02 | 1d | 2016-11-21 | 2016-11-21 |  | start no earlier than 2016-11-21 | Juanfran | 8h | 8h | 80 | 80 |
| 39 | 1.3.4 | Tomar decisiones sobre la infraestructura de frontend (GULP vs WebPack) | 1d | 2016-11-21 A | 2016-11-21 A | 37 | 100% |  | 2016-11-02 | 2016-11-02 | 1d | 2016-11-21 | 2016-11-21 |  |  | Raquel | 8h | 8h | 80 | 80 |
| 40 | 1.3.5 | Preparar presentación tema 7.7 | 1d | 2016-11-21 A | 2016-11-21 A |  | 100% |  | 2016-11-02 | 2016-11-02 | 1d | 2016-11-21 | 2016-11-21 |  | start no earlier than 2016-11-21 | Yolanda | 8h | 8h | 80 | 80 |
| 41 | 1.3.6 | Implementar subida de fotos a carpeta pública | 2d | 2016-11-21 A | 2016-11-22 A |  | 100% |  | 2016-11-02 | 2016-11-03 | 2d | 2016-11-21 | 2016-11-22 |  | start no earlier than 2016-11-21 | Alex | 16h | 16h | 160 | 160 |
| 42 | 1.3.7 | Crear arquitectura del frontend | 1d | 2016-11-22 A | 2016-11-22 | 39 | 75% | 0.25d | 2016-11-03 | 2016-11-03 | 1d | 2016-11-22 | 2016-11-22 | 6d |  | Raquel; Yolanda | 16h | 12h | 160 | 120 |
| 43 | 1.3.8 | Incorporar SASS y Angular Material | 0.5d | 2016-11-23 A | 2016-11-23 A | 42 | 100% |  | 2016-11-04 | 2016-11-04 | 0.5d | 2016-11-23 | 2016-11-23 |  |  | Raquel | 4h | 4h | 40 | 40 |
| 44 | 1.3.9 | Implementar rutas de la API | 1d | 2016-11-23 A | 2016-11-23 A |  | 100% |  | 2016-11-04 | 2016-11-04 | 1d | 2016-11-23 | 2016-11-23 |  | start no earlier than 2016-11-23 | Alex; Pablo; Juanfran | 24h | 24h | 240 | 240 |
| 45 | 1.3.10 | Rellenar documento de gestión de riesgos | 0.5d | 2016-11-24 A | 2016-11-24 A |  | 100% |  | 2016-11-07 | 2016-11-07 | 0.5d | 2016-11-24 | 2016-11-24 |  | start no earlier than 2016-11-24 | Juanfran | 4h | 4h | 40 | 40 |
| 46 | 1.3.11 | Preparar presentación tema 7.8 | 1d | 2016-11-24 A | 2016-11-24 A |  | 100% |  | 2016-11-07 | 2016-11-07 | 1d | 2016-11-24 | 2016-11-24 |  | start no earlier than 2016-11-24 | Raquel | 8h | 8h | 80 | 80 |
| 47 | 1.3.12 | Pruebas con API de Twitter | 0.5d | 2016-11-24 A | 2016-11-24 A |  | 100% |  | 2016-11-07 | 2016-11-07 | 0.5d | 2016-11-24 | 2016-11-24 |  | start no earlier than 2016-11-24 | Yolanda | 4h | 4h | 40 | 40 |
| 48 | 1.3.13 | Pruebas con API de Google+ | 0.5d | 2016-11-24 A | 2016-11-24 A |  | 100% |  | 2016-11-07 | 2016-11-07 | 0.5d | 2016-11-24 | 2016-11-24 |  | start no earlier than 2016-11-24 | Alex | 4h | 4h | 40 | 40 |
| 49 | 1.3.14 | Crear modelos en la API | 0.5d | 2016-11-24 A | 2016-11-24 A |  | 100% |  | 2016-11-08 | 2016-11-08 | 0.5d | 2016-11-24 | 2016-11-24 |  | start no earlier than 2016-11-24 | Alex; Pablo; Juanfran | 12h | 12h | 120 | 120 |
| 50 | 1.3.15 | Implementar subida de fotos al servidor | 1d | 2016-11-25 A | 2016-11-25 A | 41 | 100% |  | 2016-11-07 | 2016-11-07 | 1d | 2016-11-25 | 2016-11-25 |  | start no earlier than 2016-11-25 | Pablo | 8h | 8h | 80 | 80 |
| 51 | 1.3.16 | Redactar guía de SEO | 2d | 2016-11-25 A | 2016-11-28 A |  | 100% |  | 2016-11-08 | 2016-11-09 | 2d | 2016-11-25 | 2016-11-28 |  | start no earlier than 2016-11-25 | Yolanda | 16h | 16h | 160 | 160 |
| 52 | 1.3.17 | Pruebas con API de Facebook | 0.5d | 2016-11-28 A | 2016-11-28 A |  | 100% |  | 2016-11-08 | 2016-11-08 | 0.5d | 2016-11-28 | 2016-11-28 |  | start no earlier than 2016-11-28 | Pablo | 4h | 4h | 40 | 40 |
| 53 | 1.3.18 | Desarrollar primera versión del MOOC | 1d | 2016-11-29 A | 2016-11-29 A |  | 100% |  | 2016-11-04 | 2016-11-04 | 1d | 2016-11-29 | 2016-11-29 |  | start no earlier than 2016-11-29 | Yolanda | 8h | 8h | 80 | 80 |
| 54 | 1.3.19 | Registrar tiempos y % de realización de tareas | 0.25d | 2016-11-30 A | 2016-11-30 A |  | 100% |  | 2016-11-09 | 2016-11-09 | 0.25d | 2016-11-30 | 2016-11-30 |  | start no earlier than 2016-11-30 | Pablo | 2h | 2h | 20 | 20 |
| 55 | 1.3.20 | Comparar planificación prevista y real | 0.25d | 2016-11-30 A | 2016-11-30 A | 54 | 100% |  | 2016-11-09 | 2016-11-09 | 0.25d | 2016-11-30 | 2016-11-30 |  | start no earlier than 2016-11-30 | Pablo | 2h | 2h | 20 | 20 |
| 56 | 1.3.21 | Aplicar modelo EVA | 0.25d | 2016-11-30 | 2016-11-30 | 55 |  |  | 2016-11-09 | 2016-11-09 | 0.25d | 2016-11-30 | 2016-11-30 | 0.25d | start no earlier than 2016-11-30 | Pablo | 2h |  | 20 |  |
| 57 | 1.3.22 | Confeccionar informes de iteración e informe resumen | 0.25d | 2016-11-30 A | 2016-11-30 A | 56 | 100% |  | 2016-11-09 | 2016-11-09 | 0.25d | 2016-11-30 | 2016-11-30 |  |  | Pablo | 2h | 2h | 20 | 20 |
| 58 | 1.4 | **Iteración 4** | 10d | 2016-12-01 A | 2016-12-14 | 35 | 97% | 0.31d | 2016-11-10 | 2016-11-23 | 10d | 2016-12-01 | 2016-12-14 | 0d |  |  | 208h | 204h | 2,080 | 2,040 |
| 59 | 1.4.1 | Preparar presentaciones de tecnologías a utilizar | 2d | 2016-12-01 A | 2016-12-02 A |  | 100% |  | 2016-11-16 | 2016-11-17 | 2d | 2016-12-01 | 2016-12-02 |  | start no earlier than 2016-11-28 | Yolanda; Raquel; Alex; Pablo | 64h | 64h | 640 | 640 |
| 60 | 1.4.2 | Cambiar conteo de favoritos de anuncios | 0.5d | 2016-12-05 A | 2016-12-05 A |  | 100% |  | 2016-11-10 | 2016-11-10 | 0.5d | 2016-12-05 | 2016-12-05 |  | start no earlier than 2016-12-05 | Juanfran | 4h | 4h | 40 | 40 |
| 61 | 1.4.3 | Ocultar campos privados del usuario | 0.5d | 2016-12-05 A | 2016-12-05 A |  | 100% |  | 2016-11-10 | 2016-11-10 | 0.5d | 2016-12-05 | 2016-12-05 |  | start no earlier than 2016-12-05 | Juanfran | 4h | 4h | 40 | 40 |
| 62 | 1.4.4 | Crear miniatura de imagen para los anuncios | 1d | 2016-12-06 A | 2016-12-06 |  | 75% | 0.25d | 2016-11-10 | 2016-11-10 | 1d | 2016-12-06 | 2016-12-06 | 6d | start no earlier than 2016-12-06 | Alex | 8h | 6h | 80 | 60 |
| 63 | 1.4.5 | Crear arquitectura del frontend | 1d | 2016-12-06 A | 2016-12-06 A |  | 100% |  | 2016-11-10 | 2016-11-10 | 1d | 2016-12-06 | 2016-12-06 |  | start no earlier than 2016-12-06 | Yolanda | 8h | 8h | 80 | 80 |
| 64 | 1.4.6 | Destruir en cascada los modelos que dependan de otros | 2d | 2016-12-06 A | 2016-12-07 A | 60, 61 | 100% |  | 2016-11-11 | 2016-11-14 | 2d | 2016-12-06 | 2016-12-07 |  | start no earlier than 2016-12-06 | Pablo | 16h | 16h | 160 | 160 |
| 65 | 1.4.7 | Realizar primeras pruebas con Angular2 | 3d | 2016-12-07 A | 2016-12-09 A | 63 | 100% |  | 2016-11-11 | 2016-11-15 | 3d | 2016-12-07 | 2016-12-09 |  | start no earlier than 2016-11-21 | Yolanda; Raquel | 48h | 48h | 480 | 480 |
| 66 | 1.4.8 | Revisar rutas de la API | 3d | 2016-12-08 A | 2016-12-12 A | 60, 64, 61 | 100% |  | 2016-11-18 | 2016-11-22 | 3d | 2016-12-08 | 2016-12-12 |  | start no earlier than 2016-11-28 | Alex | 24h | 24h | 240 | 240 |
| 67 | 1.4.9 | Crear footer y header de la página web | 1d | 2016-12-12 A | 2016-12-12 A | 65 | 100% |  | 2016-11-18 | 2016-11-18 | 1d | 2016-12-12 | 2016-12-12 |  | start no earlier than 2016-11-28 | Raquel; Yolanda | 16h | 16h | 160 | 160 |
| 68 | 1.4.10 | Autentificación de usuarios por Google | 0.5d | 2016-12-13 A | 2016-12-13 A | 69 | 100% |  | 2016-11-11 | 2016-11-11 | 0.5d | 2016-12-13 | 2016-12-13 |  | start no earlier than 2016-12-02 | Alex | 4h | 4h | 40 | 40 |
| 69 | 1.4.11 | Autentificación de usuarios por Facebook | 0.5d | 2016-12-13 A | 2016-12-13 A |  | 100% |  | 2016-11-10 | 2016-11-10 | 0.5d | 2016-12-13 | 2016-12-13 |  | start no earlier than 2016-12-13 | Pablo | 4h | 4h | 40 | 40 |
| 70 | 1.4.12 | Confeccionar informes de iteración e informe resumen | 0.25d | 2016-12-14 A | 2016-12-14 A |  | 100% |  | 2016-11-23 | 2016-11-23 | 0.25d | 2016-12-14 | 2016-12-14 |  | start no earlier than 2016-12-14 | Pablo | 2h | 2h | 20 | 20 |
| 71 | 1.4.13 | Aplicar modelo EVA | 0.25d | 2016-12-14 | 2016-12-14 | 70 |  |  | 2016-11-23 | 2016-11-23 | 0.25d | 2016-12-14 | 2016-12-14 | 0.5d | start no earlier than 2016-12-14 | Pablo | 2h |  | 20 |  |
| 72 | 1.4.14 | Registrar tiempos y % de realización de tareas | 0.25d | 2016-12-14 A | 2016-12-14 A | 71 | 100% |  | 2016-11-23 | 2016-11-23 | 0.25d | 2016-12-14 | 2016-12-14 |  | start no earlier than 2016-12-14 | Pablo | 2h | 2h | 20 | 20 |
| 73 | 1.4.15 | Comparar planificación prevista y real | 0.25d | 2016-12-14 A | 2016-12-14 A | 72 | 100% |  | 2016-11-23 | 2016-11-23 | 0.25d | 2016-12-14 | 2016-12-14 |  | start no earlier than 2016-12-05 | Pablo | 2h | 2h | 20 | 20 |

Notes:
- 35: Implementar el servidor
- 58: Realizar pruebas del funcionamiento del servidor

| ID | WBS | Task | Type | Duration | Start | Finish | Predecessors | Complete | Remaining | Baseline start | Baseline finish | Baseline duration | Baseline 1 start | Baseline 1 finish | Total slack | Free slack | Constraint | Resources | Work | Actual work | Cost | Actual cost |
| --- | --- | --- | --- | --- | --- | --- | --- | --- | --- | --- | --- | --- | --- | --- | --- | --- | --- | --- | --- | --- | --- | --- |
| 74 | 1.5 | **Iteración 5** |  | 7d | 2016-12-15 A | 2016-12-23 | 58 | 82% | 1.29d | 2016-11-24 | 2016-12-02 | 7d | 2016-12-15 | 2016-12-23 | 0d |  |  |  | 220h | 170h | 2,200 | 1,700 |
| 75 | 1.5.1 | Diseñar badges para el MOOC |  | 1d | 2016-12-15 A | 2016-12-15 |  | 50% | 0.5d | 2016-11-24 | 2016-11-24 | 1d | 2016-12-15 | 2016-12-15 | 6d |  |  | Raquel | 8h | 4h | 80 | 40 |
| 76 | 1.5.2 | Implementar ventanas emergentes al finalizar unidades del MOOC |  | 1d | 2016-12-15 A | 2016-12-15 A |  | 100% |  | 2016-11-28 | 2016-11-28 | 0.5d | 2016-12-15 | 2016-12-15 |  |  | start no earlier than 2016-12-15 | Yolanda | 8h | 8h | 80 | 80 |
| 77 | 1.5.3 | Implementar autentificación local de administradores |  | 2d | 2016-12-15 A | 2016-12-16 A |  | 100% |  | 2016-11-24 | 2016-11-25 | 2d | 2016-12-15 | 2016-12-16 |  |  |  | Pablo | 16h | 16h | 160 | 160 |
| 78 | 1.5.4 | Implementar envío de correos electrónicos a través de la API |  | 3d | 2016-12-15 A | 2016-12-19 |  | 75% | 0.75d | 2016-11-24 | 2016-11-28 | 3d | 2016-12-15 | 2016-12-19 | 4d |  |  | Alex | 24h | 18h | 240 | 180 |
| 79 | 1.5.5 | Realizar modificaciones en los modelos de la API |  | 4d | 2016-12-15 A | 2016-12-20 A |  | 100% |  | 2016-11-24 | 2016-11-29 | 4d | 2016-12-15 | 2016-12-20 |  |  |  | Juanfran | 32h | 32h | 320 | 320 |
| 80 | 1.5.6 | Introducir estructura del curso en CourseBuilder |  | 0.5d | 2016-12-16 A | 2016-12-16 A |  | 100% |  | 2016-11-29 | 2016-11-29 | 1d | 2016-12-16 | 2016-12-16 |  |  | start no earlier than 2016-12-16 | Yolanda | 4h | 4h | 40 | 40 |
| 81 | 1.5.7 | Redactar las preguntas de las actividades del MOOC |  | 1.5d | 2016-12-16 A | 2016-12-19 | 80 | 50% | 0.75d | 2016-11-28 | 2016-11-28 | 0.5d | 2016-12-16 | 2016-12-19 | 4d |  | start no earlier than 2016-12-16 | Yolanda; Raquel | 24h | 12h | 240 | 120 |
| 82 | 1.5.8 | Implementar gestión de roles de administradores |  | 1d | 2016-12-19 A | 2016-12-19 | 77 | 25% | 0.75d | 2016-11-28 | 2016-11-28 | 1d | 2016-12-19 | 2016-12-19 | 4d |  |  | Pablo | 8h | 2h | 80 | 20 |
| 83 | 1.5.9 | Realizar componente "¿Cómo funciona?" |  | 1d | 2016-12-20 A | 2016-12-20 A |  | 100% |  | 2016-11-29 | 2016-11-29 | 1d | 2016-12-20 | 2016-12-20 |  |  | start no earlier than 2016-12-20 | Raquel | 8h | 8h | 80 | 80 |
| 84 | 1.5.10 | Preparar presentación del MOOC |  | 0.5d | 2016-12-20 A | 2016-12-20 A | 81 | 100% |  | 2016-11-30 | 2016-11-30 | 0.5d | 2016-12-20 | 2016-12-20 |  |  | start no earlier than 2016-12-20 | Yolanda | 4h | 4h | 40 | 40 |
| 85 | 1.5.11 | Realizar diagrama de flujo de interfaces |  | 0.5d | 2016-12-20 A | 2016-12-20 A |  | 100% |  | 2016-11-30 | 2016-11-30 | 0.5d | 2016-12-20 | 2016-12-20 |  |  | start no earlier than 2016-12-20 | Yolanda | 4h | 4h | 40 | 40 |
| 86 | 1.5.12 | Crear miniatura de imagen para los anuncios |  | 1d | 2016-12-20 A | 2016-12-20 A |  | 100% |  | 2016-11-29 | 2016-11-29 | 1d | 2016-12-20 | 2016-12-20 |  |  | start no earlier than 2016-12-20 | Alex | 8h | 8h | 80 | 80 |
| 87 | 1.5.13 | Terminar plan general |  | 0.5d | 2016-12-20 A | 2016-12-20 A |  | 100% |  | 2016-11-30 | 2016-11-30 | 0.5d | 2016-12-20 | 2016-12-20 |  |  | start no earlier than 2016-12-20 | Pablo | 4h | 4h | 40 | 40 |
| 88 | 1.5.14 | Revisar iteración 3-4-5 |  | 0.5d | 2016-12-20 A | 2016-12-20 A |  | 100% |  | 2016-12-01 | 2016-12-01 | 0.5d | 2016-12-20 | 2016-12-20 |  |  | start no earlier than 2016-12-20 | Pablo | 4h | 4h | 40 | 40 |
| 89 | 1.5.15 | Realizar slider en la landing |  | 1d | 2016-12-21 A | 2016-12-21 A |  | 100% |  | 2016-12-01 | 2016-12-01 | 1d | 2016-12-21 | 2016-12-21 |  |  | start no earlier than 2016-12-21 | Yolanda | 8h | 8h | 80 | 80 |
| 90 | 1.5.16 | Implementar shader básico |  | 0.5d | 2016-12-21 | 2016-12-21 |  |  |  | 2016-12-01 | 2016-12-01 | 0.5d | 2016-12-21 | 2016-12-21 | 0.25d | 0d | start no earlier than 2016-12-21 | Alex; Raquel | 8h |  | 80 |  |
| 91 | 1.5.17 | Probar visualizador Open GL 4.X simple |  | 1d | 2016-12-21 A | 2016-12-22 | 90 | 25% | 0.75d | 2016-12-02 | 2016-12-02 | 1d | 2016-12-21 | 2016-12-22 | 1.5d |  | start no earlier than 2016-12-12 | Alex; Raquel | 16h | 4h | 160 | 40 |
| 92 | 1.5.18 | Realizar componente de "Categorías" |  | 1d | 2016-12-22 A | 2016-12-22 A | 89 | 100% |  | 2016-12-02 | 2016-12-02 | 1d | 2016-12-22 | 2016-12-22 |  |  | start no earlier than 2016-12-22 | Yolanda | 8h | 8h | 80 | 80 |
| 93 | 1.5.19 | Finalizar actividades de la Wiki |  | 0.5d | 2016-12-22 A | 2016-12-22 A |  | 100% |  | 2016-12-01 | 2016-12-01 | 0.5d | 2016-12-22 | 2016-12-22 |  |  | start no earlier than 2016-12-22 | Raquel; Pablo; Alex; Juanfran | 16h | 16h | 160 | 160 |
| 94 | 1.5.20 | Registrar tiempos y % de realización de tareas |  | 0.25d | 2016-12-23 A | 2016-12-23 A |  | 100% |  | 2016-12-02 | 2016-12-02 | 0.25d | 2016-12-23 | 2016-12-23 |  |  | start no earlier than 2016-12-23 | Pablo | 2h | 2h | 20 | 20 |
| 95 | 1.5.21 | Comparar planificación prevista y real |  | 0.25d | 2016-12-23 A | 2016-12-23 A | 94 | 100% |  | 2016-12-02 | 2016-12-02 | 0.25d | 2016-12-23 | 2016-12-23 |  |  | start no earlier than 2016-12-23 | Pablo | 2h | 2h | 20 | 20 |
| 96 | 1.5.22 | Aplicar modelo EVA |  | 0.25d | 2016-12-23 | 2016-12-23 | 95 |  |  | 2016-12-02 | 2016-12-02 | 0.25d | 2016-12-23 | 2016-12-23 | 0.25d |  | start no earlier than 2016-12-23 | Pablo | 2h |  | 20 |  |
| 97 | 1.5.23 | Confeccionar informes de iteración e informe resumen |  | 0.25d | 2016-12-23 A | 2016-12-23 A | 96 | 100% |  | 2016-12-02 | 2016-12-02 | 0.25d | 2016-12-23 | 2016-12-23 |  |  | start no earlier than 2016-12-23 | Pablo | 2h | 2h | 20 | 20 |
| 98 | 1.6 | Entregables Hito 1 | milestone | 0d | 2016-12-23 | 2016-12-23 | 74 |  |  | 2016-12-02 | 2016-12-02 | 0d | 2016-12-23 | 2016-12-23 | 0d |  | start no earlier than 2016-12-12 |  |  |  |  |  |

Notes:
- 74: Preparar presentación del primer prototipo de la aplicación

| ID | WBS | Task | Type | Duration | Start | Finish | Predecessors | Baseline start | Baseline finish | Baseline duration | Baseline 1 start | Baseline 1 finish | Total slack | Constraint |
| --- | --- | --- | --- | --- | --- | --- | --- | --- | --- | --- | --- | --- | --- | --- |
| 99 | 2 | **HITO 2** |  | 1d? | 2016-12-23 | 2016-12-26 | 98 | 2016-08-22 | 2016-08-22 | 1d? | 2016-12-26 | 2016-12-26 | 0d |  |
| 100 | 2.1 | Revisar especificación del proyecto |  | 1d? | 2016-12-26 | 2016-12-26 |  | 2016-08-22 | 2016-08-22 | 1d? | 2016-12-26 | 2016-12-26 | 0d | start no earlier than 2016-09-01 |
| 101 | 2.2 | Reestimar proyecto |  | 1d? | 2016-12-26 | 2016-12-26 |  | 2016-08-22 | 2016-08-22 | 1d? | 2016-12-26 | 2016-12-26 | 0d | start no earlier than 2016-09-01 |
| 102 | 2.3 | Crear subtareas y precedencias en Project |  | 1d? | 2016-12-26 | 2016-12-26 |  | 2016-08-22 | 2016-08-22 | 1d? | 2016-12-26 | 2016-12-26 | 0d | start no earlier than 2016-09-01 |
| 103 | 2.4 | Asignar recursos a las tareas |  | 1d? | 2016-12-26 | 2016-12-26 |  | 2016-08-22 | 2016-08-22 | 1d? | 2016-12-26 | 2016-12-26 | 0d | start no earlier than 2016-09-01 |
| 104 | 2.5 | Registrar tiempos y % de realización de tareas |  | 1d? | 2016-12-26 | 2016-12-26 |  | 2016-08-22 | 2016-08-22 | 1d? | 2016-12-26 | 2016-12-26 | 0d | start no earlier than 2016-09-01 |
| 105 | 2.6 | Comparar planificación prevista y real |  | 1d? | 2016-12-26 | 2016-12-26 |  | 2016-08-22 | 2016-08-22 | 1d? | 2016-12-26 | 2016-12-26 | 0d | start no earlier than 2016-09-01 |
| 106 | 2.7 | Confeccionar informes de iteración e informe resumen |  | 1d? | 2016-12-26 | 2016-12-26 |  | 2016-08-22 | 2016-08-22 | 1d? | 2016-12-26 | 2016-12-26 | 0d | start no earlier than 2016-09-01 |
| 107 | 2.8 | Redactar documento de relación de front y back |  | 1d? | 2016-12-26 | 2016-12-26 |  | 2016-08-22 | 2016-08-22 | 1d? | 2016-12-26 | 2016-12-26 | 0d | start no earlier than 2016-09-01 |
| 108 | 2.9 | Integrar Frontend y Backend |  | 1d? | 2016-12-26 | 2016-12-26 |  | 2016-08-22 | 2016-08-22 | 1d? | 2016-12-26 | 2016-12-26 | 0d | start no earlier than 2016-09-01 |
| 109 | 2.10 | Definir guía de estilos |  | 1d? | 2016-12-26 | 2016-12-26 |  | 2016-08-22 | 2016-08-22 | 1d? | 2016-12-26 | 2016-12-26 | 0d | start no earlier than 2016-09-01 |
| 110 | 2.11 | Redacar documento de SEO |  | 1d? | 2016-12-26 | 2016-12-26 |  | 2016-08-22 | 2016-08-22 | 1d? | 2016-12-26 | 2016-12-26 | 0d | start no earlier than 2016-09-01 |
| 111 | 2.12 | Definir palabras clave |  | 1d? | 2016-12-26 | 2016-12-26 |  | 2016-08-22 | 2016-08-22 | 1d? | 2016-12-26 | 2016-12-26 | 0d | start no earlier than 2016-09-01 |
| 112 | 2.13 | Definir colocación de los elementos en la web |  | 1d? | 2016-12-26 | 2016-12-26 |  | 2016-08-22 | 2016-08-22 | 1d? | 2016-12-26 | 2016-12-26 | 0d | start no earlier than 2016-09-01 |
| 113 | 2.14 | Buscar URLs amigables |  | 1d? | 2016-12-26 | 2016-12-26 |  |  |  |  |  |  | 0d |  |
| 114 | 2.15 | Redactar documento sobre toma de decisión y versiones |  | 1d? | 2016-12-26 | 2016-12-26 |  | 2016-08-22 | 2016-08-22 | 1d? | 2016-12-26 | 2016-12-26 | 0d | start no earlier than 2016-09-01 |
| 115 | 2.16 | Instalar web sobre servidor de frameworks |  | 1d? | 2016-12-26 | 2016-12-26 |  | 2016-08-22 | 2016-08-22 | 1d? | 2016-12-26 | 2016-12-26 | 0d | start no earlier than 2016-09-01 |
| 116 | 2.17 | Crear versión final del curso |  | 1d? | 2016-12-26 | 2016-12-26 |  | 2016-08-22 | 2016-08-22 | 1d? | 2016-12-26 | 2016-12-26 | 0d | start no earlier than 2016-09-01 |
| 117 | 2.18 | Redactar informe de desarrollo del MOOC |  | 1d? | 2016-12-26 | 2016-12-26 |  | 2016-08-22 | 2016-08-22 | 1d? | 2016-12-26 | 2016-12-26 | 0d | start no earlier than 2016-09-01 |
| 118 | 2.19 | Preparar MOOC para su integración |  | 1d? | 2016-12-26 | 2016-12-26 |  | 2016-08-22 | 2016-08-22 | 1d? | 2016-12-26 | 2016-12-26 | 0d | start no earlier than 2016-09-01 |
| 119 | 2.20 | Diseñar badges para el MOOC |  | 1d? | 2016-12-26 | 2016-12-26 |  |  |  |  |  |  | 0d |  |
| 120 | 2.21 | Redactar preguntas de las actividades del MOOC |  | 1d? | 2016-12-26 | 2016-12-26 |  |  |  |  |  |  | 0d |  |
| 121 | 2.22 | Redactar wiki de la asignatura |  | 1d? | 2016-12-26 | 2016-12-26 |  |  |  |  |  |  | 0d |  |
| 122 | 2.23 | Implementar parser de objetos en múltiples formatos |  | 1d? | 2016-12-26 | 2016-12-26 |  | 2016-08-22 | 2016-08-22 | 1d? | 2016-12-26 | 2016-12-26 | 0d | start no earlier than 2016-09-01 |
| 123 | 2.24 | Crear visualizador OpenGL 4.X simple |  | 1d | 2016-12-26 | 2016-12-26 |  | 2016-08-22 | 2016-08-22 | 1d? | 2016-12-26 | 2016-12-26 | 0d |  |
| 124 | 2.25 | Implementar shader básico |  | 1d? | 2016-12-26 | 2016-12-26 |  | 2016-08-22 | 2016-08-22 | 1d? | 2016-12-26 | 2016-12-26 | 0d | start no earlier than 2016-09-01 |
| 125 | 2.26 | Probar visualizador Open GL 4.X simple |  | 1d? | 2016-12-26 | 2016-12-26 |  | 2016-08-22 | 2016-08-22 | 1d? | 2016-12-26 | 2016-12-26 | 0d | start no earlier than 2016-09-01 |
| 126 | 2.27 | Implementar gestión de roles de administradores |  | 1d? | 2016-12-26 | 2016-12-26 |  |  |  |  |  |  | 0d |  |
| 127 | 2.28 | Implementar envío de correos electrónicos a través de la API |  | 1d? | 2016-12-26 | 2016-12-26 |  |  |  |  |  |  | 0d |  |
| 128 | 2.29 | Redactar documentación final de la API |  | 1d? | 2016-12-26 | 2016-12-26 |  |  |  |  |  |  | 0d |  |
| 129 | 2.30 | Redactar documentación de objetivos finales de la asignatura |  | 1d? | 2016-12-26 | 2016-12-26 |  |  |  |  |  |  | 0d |  |
| 130 | 2.31 | Entregables Hito 2 | milestone | 0d | 2016-12-23 | 2016-12-23 |  |  |  |  |  |  | 1d |  |

Notes:
- 99: COLORES: / - Amarillo: eL / - Naranja: SMA / - Verde: PM / - Azul: SDM / - Violeta: TAG / - Rojo: SMBI

| ID | WBS | Task | Type | Duration | Start | Finish | Predecessors | Baseline start | Baseline finish | Baseline duration | Baseline 1 start | Baseline 1 finish | Total slack | Constraint |
| --- | --- | --- | --- | --- | --- | --- | --- | --- | --- | --- | --- | --- | --- | --- |
| 131 | 3 | **HITO 3** |  | 1d? | 2016-12-26 | 2016-12-27 | 99 | 2016-08-22 | 2016-08-22 | 1d? | 2016-12-27 | 2016-12-27 | 0d |  |
| 132 | 3.1 | Crear subtareas y precedencias para el mes de Febrero |  | 1d? | 2016-12-27 | 2016-12-27 |  | 2016-08-22 | 2016-08-22 | 1d? | 2016-12-27 | 2016-12-27 | 0d | start no earlier than 2016-09-01 |
| 133 | 3.2 | Crear subtareas y precedencias para el mes de Marzo |  | 1d? | 2016-12-27 | 2016-12-27 |  | 2016-08-22 | 2016-08-22 | 1d? | 2016-12-27 | 2016-12-27 | 0d | start no earlier than 2016-09-01 |
| 134 | 3.3 | Asignar recursos a las tareas |  | 1d? | 2016-12-27 | 2016-12-27 |  | 2016-08-22 | 2016-08-22 | 1d? | 2016-12-27 | 2016-12-27 | 0d | start no earlier than 2016-09-01 |
| 135 | 3.4 | Registrar tiempos y % de realización de tareas |  | 1d? | 2016-12-27 | 2016-12-27 |  | 2016-08-22 | 2016-08-22 | 1d? | 2016-12-27 | 2016-12-27 | 0d | start no earlier than 2016-09-01 |
| 136 | 3.5 | Comparar planificación prevista y real |  | 1d? | 2016-12-27 | 2016-12-27 |  | 2016-08-22 | 2016-08-22 | 1d? | 2016-12-27 | 2016-12-27 | 0d | start no earlier than 2016-09-01 |
| 137 | 3.6 | Confeccionar informes de iteración e informe resumen |  | 1d? | 2016-12-27 | 2016-12-27 |  | 2016-08-22 | 2016-08-22 | 1d? | 2016-12-27 | 2016-12-27 | 0d | start no earlier than 2016-09-01 |
| 138 | 3.7 | Elaborar presentación del Hito 3 |  | 1d? | 2016-12-27 | 2016-12-27 |  | 2016-08-22 | 2016-08-22 | 1d? | 2016-12-27 | 2016-12-27 | 0d | start no earlier than 2016-09-01 |
| 139 | 3.8 | Implementar frontend para la aplicación web |  | 1d | 2016-12-27 | 2016-12-27 |  | 2016-08-22 | 2016-08-22 | 1d? | 2016-12-27 | 2016-12-27 | 0d |  |
| 140 | 3.9 | Implementar frontend para la app móvil |  | 1d? | 2016-12-27 | 2016-12-27 |  | 2016-08-22 | 2016-08-22 | 1d? | 2016-12-27 | 2016-12-27 | 0d | start no earlier than 2016-09-01 |
| 141 | 3.10 | Implementar frontend para el backoffice |  | 1d? | 2016-12-27 | 2016-12-27 |  | 2016-08-22 | 2016-08-22 | 1d? | 2016-12-27 | 2016-12-27 | 0d | start no earlier than 2016-09-01 |
| 142 | 3.11 | Redactar documentación de la estrucutra del código |  | 1d | 2016-12-27 | 2016-12-27 |  | 2016-08-22 | 2016-08-22 | 1d? | 2016-12-27 | 2016-12-27 | 0d |  |
| 143 | 3.12 | Relacionar interfaces y funcionalidades |  | 1d? | 2016-12-27 | 2016-12-27 |  | 2016-08-22 | 2016-08-22 | 1d? | 2016-12-27 | 2016-12-27 | 0d | start no earlier than 2016-09-01 |
| 144 | 3.13 | Particularidades especiales |  | 1d? | 2016-12-27 | 2016-12-27 |  | 2016-08-22 | 2016-08-22 | 1d? | 2016-12-27 | 2016-12-27 | 0d | start no earlier than 2016-09-01 |
| 145 | 3.14 | Relación entre interfaces y funcionalidades |  | 1d? | 2016-12-27 | 2016-12-27 |  | 2016-08-22 | 2016-08-22 | 1d? | 2016-12-27 | 2016-12-27 | 0d | start no earlier than 2016-09-01 |
| 146 | 3.15 | Integrar MOOC en la plataforma |  | 1d? | 2016-12-27 | 2016-12-27 |  | 2016-08-22 | 2016-08-22 | 1d? | 2016-12-27 | 2016-12-27 | 0d | start no earlier than 2016-09-01 |
| 147 | 3.16 | Integrar las llamadas a APIs de terceros en el Front-end |  | 1d? | 2016-12-27 | 2016-12-27 |  | 2016-08-22 | 2016-08-22 | 1d? | 2016-12-27 | 2016-12-27 | 0d | start no earlier than 2016-09-01 |
| 148 | 3.17 | Construir árbol de la escena |  | 1d? | 2016-12-27 | 2016-12-27 |  | 2016-08-22 | 2016-08-22 | 1d? | 2016-12-27 | 2016-12-27 | 0d | start no earlier than 2016-09-01 |
| 149 | 3.18 | Crear recorrido del árbol |  | 1d? | 2016-12-27 | 2016-12-27 |  | 2016-08-22 | 2016-08-22 | 1d? | 2016-12-27 | 2016-12-27 | 0d | start no earlier than 2016-09-01 |
| 150 | 3.19 | Crear gestor de recursos |  | 1d | 2016-12-27 | 2016-12-27 |  | 2016-08-22 | 2016-08-22 | 1d? | 2016-12-27 | 2016-12-27 | 0d |  |
| 151 | 3.20 | Gestionar carga de modelos en formato múltiple en las entidades de tipo malla |  | 1d? | 2016-12-27 | 2016-12-27 |  | 2016-08-22 | 2016-08-22 | 1d? | 2016-12-27 | 2016-12-27 | 0d | start no earlier than 2016-09-01 |
| 152 | 3.21 | Gestionar carga de varios ficheros para animación |  | 1d? | 2016-12-27 | 2016-12-27 |  | 2016-08-22 | 2016-08-22 | 1d? | 2016-12-27 | 2016-12-27 | 0d | start no earlier than 2016-09-01 |
| 153 | 3.22 | Implementar visualizador OpenGL 4.X de las entidades tipo malla |  | 1d | 2016-12-27 | 2016-12-27 |  | 2016-08-22 | 2016-08-22 | 1d? | 2016-12-27 | 2016-12-27 | 0d |  |
| 154 | 3.23 | Integrar el motor añadiendo cámaras y luces |  | 1d? | 2016-12-27 | 2016-12-27 |  | 2016-08-22 | 2016-08-22 | 1d? | 2016-12-27 | 2016-12-27 | 0d | start no earlier than 2016-09-01 |
| 155 | 3.24 | Visualizar registro de cámaras y luces |  | 1d? | 2016-12-27 | 2016-12-27 |  | 2016-08-22 | 2016-08-22 | 1d? | 2016-12-27 | 2016-12-27 | 0d | start no earlier than 2016-09-01 |
| 156 | 3.25 | Crear una fachada entre el motor y la aplicación |  | 1d? | 2016-12-27 | 2016-12-27 |  | 2016-08-22 | 2016-08-22 | 1d? | 2016-12-27 | 2016-12-27 | 0d | start no earlier than 2016-09-01 |
| 157 | 3.26 | Implementar visualizador OpenGL 4.X con tres shaders avanzados |  | 1d? | 2016-12-27 | 2016-12-27 |  | 2016-08-22 | 2016-08-22 | 1d? | 2016-12-27 | 2016-12-27 | 0d | start no earlier than 2016-09-01 |
| 158 | 3.27 | Entregables Hito 3 | milestone | 0d | 2016-12-26 | 2016-12-26 |  |  |  |  |  |  | 1d |  |

Notes:
- 131: COLORES: / - Amarillo: eL / - Naranja: SMA / - Verde: PM / - Azul: SDM / - Violeta: TAG / - Rojo: SMBI

| ID | WBS | Task | Duration | Start | Finish | Predecessors | Baseline start | Baseline finish | Baseline duration | Baseline 1 start | Baseline 1 finish | Total slack | Constraint |
| --- | --- | --- | --- | --- | --- | --- | --- | --- | --- | --- | --- | --- | --- |
| 159 | 4 | **HITO 4** | 1d? | 2016-12-28 | 2016-12-28 | 131 | 2016-08-22 | 2016-08-22 | 1d? | 2016-12-28 | 2016-12-28 | 0d |  |
| 160 | 4.1 | Crear subtareas y precedencias para el mes de Abril | 1d? | 2016-12-28 | 2016-12-28 |  | 2016-08-22 | 2016-08-22 | 1d? | 2016-12-28 | 2016-12-28 | 0d | start no earlier than 2016-09-01 |
| 161 | 4.2 | Crear subtareas y precedencias para el mes de Mayo | 1d? | 2016-12-28 | 2016-12-28 |  | 2016-08-22 | 2016-08-22 | 1d? | 2016-12-28 | 2016-12-28 | 0d | start no earlier than 2016-09-01 |
| 162 | 4.3 | Asignar recursos a las tareas | 1d? | 2016-12-28 | 2016-12-28 |  | 2016-08-22 | 2016-08-22 | 1d? | 2016-12-28 | 2016-12-28 | 0d | start no earlier than 2016-09-01 |
| 163 | 4.4 | Registrar tiempos y % de realización de tareas | 1d? | 2016-12-28 | 2016-12-28 |  | 2016-08-22 | 2016-08-22 | 1d? | 2016-12-28 | 2016-12-28 | 0d | start no earlier than 2016-09-01 |
| 164 | 4.5 | Comparar planificación prevista y real | 1d? | 2016-12-28 | 2016-12-28 |  | 2016-08-22 | 2016-08-22 | 1d? | 2016-12-28 | 2016-12-28 | 0d | start no earlier than 2016-09-01 |
| 165 | 4.6 | Confeccionar informes de iteración e informe resumen | 1d? | 2016-12-28 | 2016-12-28 |  | 2016-08-22 | 2016-08-22 | 1d? | 2016-12-28 | 2016-12-28 | 0d | start no earlier than 2016-09-01 |
| 166 | 4.7 | Elaborar presentación del Hito 4 | 1d? | 2016-12-28 | 2016-12-28 |  | 2016-08-22 | 2016-08-22 | 1d? | 2016-12-28 | 2016-12-28 | 0d | start no earlier than 2016-09-01 |
| 167 | 4.8 | Implementar frontend para la app móvil | 1d? | 2016-12-28 | 2016-12-28 |  |  |  |  |  |  | 0d |  |
| 168 | 4.9 | Implementar frontend del backoffice | 1d? | 2016-12-28 | 2016-12-28 |  |  |  |  |  |  | 0d |  |
| 169 | 4.10 | Redactar documento de pruebas de las funcionalidades | 1d | 2016-12-28 | 2016-12-28 |  | 2016-08-22 | 2016-08-22 | 1d? | 2016-12-28 | 2016-12-28 | 0d |  |
| 170 | 4.11 | Redactar documento de pruebas de la aplicación | 1d? | 2016-12-28 | 2016-12-28 |  | 2016-08-22 | 2016-08-22 | 1d? | 2016-12-28 | 2016-12-28 | 0d | start no earlier than 2016-09-01 |
| 171 | 4.12 | Redactar documento de pruebas de seguridad de Front-end | 1d? | 2016-12-28 | 2016-12-28 |  | 2016-08-22 | 2016-08-22 | 1d? | 2016-12-28 | 2016-12-28 | 0d | start no earlier than 2016-09-01 |
| 172 | 4.13 | Redactar documento de pruebas de rendimiento | 1d? | 2016-12-28 | 2016-12-28 |  | 2016-08-22 | 2016-08-22 | 1d? | 2016-12-28 | 2016-12-28 | 0d | start no earlier than 2016-09-01 |
| 173 | 4.14 | Lanzar la aplicación | 1d? | 2016-12-28 | 2016-12-28 |  |  |  |  |  |  | 0d |  |
| 174 | 4.15 | Validar funcionalidades creadas | 1d? | 2016-12-28 | 2016-12-28 |  | 2016-08-22 | 2016-08-22 | 1d? | 2016-12-28 | 2016-12-28 | 0d | start no earlier than 2016-09-01 |
| 175 | 4.16 | Realizar campañas de promoción del MOOC | 1d? | 2016-12-28 | 2016-12-28 |  |  |  |  |  |  | 0d |  |
| 176 | 4.17 | Realizar campañas de difusión de la plataforma | 1d? | 2016-12-28 | 2016-12-28 |  |  |  |  |  |  | 0d |  |
| 177 | 4.18 | Implementar cargador de modelos | 1d? | 2016-12-28 | 2016-12-28 |  | 2016-08-22 | 2016-08-22 | 1d? | 2016-12-28 | 2016-12-28 | 0d | start no earlier than 2016-09-01 |
| 178 | 4.19 | Implementar movimiento de las luces y la cámara | 1d? | 2016-12-28 | 2016-12-28 |  |  |  |  |  |  | 0d |  |
| 179 | 4.20 | Crear movimiento de los modelos | 1d? | 2016-12-28 | 2016-12-28 |  | 2016-08-22 | 2016-08-22 | 1d? | 2016-12-28 | 2016-12-28 | 0d | start no earlier than 2016-09-01 |
| 180 | 4.21 | Implementar cambios de modelo, materiales y texturas | 1d? | 2016-12-28 | 2016-12-28 |  | 2016-08-22 | 2016-08-22 | 1d? | 2016-12-28 | 2016-12-28 | 0d | start no earlier than 2016-09-01 |
| 181 | 4.22 | Integrar con el motor | 1d? | 2016-12-28 | 2016-12-28 |  |  |  |  |  |  | 0d |  |
| 182 | 4.23 | Crear animaciones | 1d? | 2016-12-28 | 2016-12-28 |  | 2016-08-22 | 2016-08-22 | 1d? | 2016-12-28 | 2016-12-28 | 0d | start no earlier than 2016-09-01 |
| 183 | 4.24 | Optimizar el motor con 1 técnica | 1d? | 2016-12-28 | 2016-12-28 |  | 2016-08-22 | 2016-08-22 | 1d? | 2016-12-28 | 2016-12-28 | 0d | start no earlier than 2016-09-01 |
| 184 | 4.25 | Crear un efecto visual | 1d? | 2016-12-28 | 2016-12-28 |  | 2016-08-22 | 2016-08-22 | 1d? | 2016-12-28 | 2016-12-28 | 0d | start no earlier than 2016-09-01 |
| 185 | 4.26 | Modelar los modelos | 1d? | 2016-12-28 | 2016-12-28 |  | 2016-08-22 | 2016-08-22 | 1d? | 2016-12-28 | 2016-12-28 | 0d | start no earlier than 2016-09-01 |
| 186 | 4.27 | Integrar el motor con la plataforma | 1d? | 2016-12-28 | 2016-12-28 |  |  |  |  |  |  | 0d |  |
| 187 | 4.28 | Entregables Hito 4 | 1d? | 2016-12-28 | 2016-12-28 |  |  |  |  |  |  | 0d |  |

Notes:
- 159: COLORES: / - Amarillo: eL / - Naranja: SMA / - Verde: PM / - Azul: SDM / - Violeta: TAG / - Rojo: SMBI
